# Project-Plan

Schedule from MS Project, 2017-04-24 to 2017-05-24, costs in ₹, A marks actual dates.

## Calendars

- Standard: Mon-Fri 08:00-12:00, 13:00-17:00; Sat-Sun off.

## Resources

| Resource | Unit | Rate |
| --- | --- | --- |
| PM |  | 2000 |
| Project Team |  | 1000 |
| SME1 |  | 1800 |
| SME2 |  | 1800 |
| Travel |  |  |
| Boarding & Lodging |  |  |
| Commission & Fee |  |  |
| Stationary |  |  |
| Fire Equipment | Unit | 50000 |

## Schedule

| ID | WBS | Task | Type | Duration | Start | Finish | Predecessors | Complete | Baseline start | Baseline finish | Baseline duration | Total slack | Resources | Work | Actual work | Cost | Baseline cost | Actual cost |
| --- | --- | --- | --- | --- | --- | --- | --- | --- | --- | --- | --- | --- | --- | --- | --- | --- | --- | --- |
| 1 | 1 | **Project Iniation** |  | 4.25d | 2017-04-24 A | 2017-04-28 A |  | 100% | 2017-04-24 | 2017-04-28 | 4.25d |  |  | 42h | 42h | 76,000 | 76,000 | 76,000 |
| 2 | 1.1 | Prepare Project Charter |  | 1d | 2017-04-24 A | 2017-04-24 A |  | 100% | 2017-04-24 | 2017-04-24 | 1d |  | PM | 8h | 8h | 16,000 | 16,000 | 16,000 |
| 3 | 1.2 | Study Initiation Documents |  | 1d | 2017-04-25 A | 2017-04-25 A | 2 | 100% | 2017-04-25 | 2017-04-25 | 1d |  | PM | 8h | 8h | 16,000 | 16,000 | 16,000 |
| 4 | 1.3 | Prepare Kickoff Presentation |  | 1d | 2017-04-26 A | 2017-04-26 A | 3 | 100% | 2017-04-26 | 2017-04-26 | 1d |  | PM | 8h | 8h | 16,000 | 16,000 | 16,000 |
| 5 | 1.4 | Identify & Invite all Stakeholders |  | 2h | 2017-04-27 A | 2017-04-27 A | 4 | 100% | 2017-04-27 | 2017-04-27 | 2h |  | PM | 2h | 2h | 4,000 | 4,000 | 4,000 |
| 6 | 1.5 | Kickoff Meeting |  | 1d | 2017-04-27 A | 2017-04-28 A | 5 | 100% | 2017-04-27 | 2017-04-28 | 1d |  | PM; Project Team | 16h | 16h | 24,000 | 24,000 | 24,000 |
| 7 | 1.6 | Project Iniation Completed | milestone | 0d | 2017-04-28 A | 2017-04-28 A | 6 | 100% | 2017-04-28 | 2017-04-28 | 0d |  | PM |  |  |  |  |  |
| 8 | 2 | **Problem Study** |  | 18d | 2017-04-28 | 2017-05-24 |  |  | 2017-04-28 | 2017-05-24 | 18d | 0d |  | 176h |  | 328,000 | 328,000 |  |
| 9 | 2.1 | Identify Stakeholders for Meeting |  | 1d | 2017-04-28 | 2017-05-01 | 1 |  | 2017-04-28 | 2017-05-01 | 1d | 0d | PM | 8h |  | 16,000 | 16,000 |  |
| 10 | 2.2 | Prepare a Questionnaire |  | 2d | 2017-05-01 | 2017-05-03 | 9 |  | 2017-05-01 | 2017-05-03 | 2d | 0d | PM; SME1 | 32h |  | 60,800 | 60,800 |  |
| 11 | 2.3 | Prepare a Interview Format |  | 2d | 2017-05-03 | 2017-05-05 | 10 |  | 2017-05-03 | 2017-05-05 | 2d | 0d | SME1 | 16h |  | 28,800 | 28,800 |  |
| 12 | 2.4 | Meet stakeholders and understand Requirments |  | 4d | 2017-05-05 | 2017-05-11 | 11 |  | 2017-05-05 | 2017-05-11 | 4d | 0d | PM; SME1 | 64h |  | 121,600 | 121,600 |  |
| 13 | 2.5 | Draft Requirments |  | 5d | 2017-05-11 | 2017-05-18 | 12 |  | 2017-05-11 | 2017-05-18 | 5d | 0d | SME1 | 40h |  | 72,000 | 72,000 |  |
| 14 | 2.6 | Internal Review |  | 2d | 2017-05-18 | 2017-05-22 | 13 |  | 2017-05-18 | 2017-05-22 | 2d | 0d | SME2 | 16h |  | 28,800 | 28,800 |  |
| 15 | 2.7 | Customer Review of Requirments | milestone | 0d | 2017-05-22 | 2017-05-22 | 14 |  | 2017-05-22 | 2017-05-22 | 0d | 0d | PM |  |  |  |  |  |
| 16 | 2.8 | Requirements Approved | milestone | 0d | 2017-05-24 | 2017-05-24 | 15FS+2d |  | 2017-05-24 | 2017-05-24 | 0d | 0d | PM |  |  |  |  |  |
| 17 | 3 | Feasibility Study |  | 1d? | 2017-04-24 | 2017-04-24 |  |  | 2017-04-24 | 2017-04-24 | 1d? | 21.25d |  |  |  |  |  |  |
| 18 | 4 | Prototyping |  | 1d? | 2017-04-24 | 2017-04-24 |  |  | 2017-04-24 | 2017-04-24 | 1d? | 21.25d |  |  |  |  |  |  |
| 19 | 5 | Designing |  | 1d? | 2017-04-24 | 2017-04-24 |  |  | 2017-04-24 | 2017-04-24 | 1d? | 21.25d |  |  |  |  |  |  |
| 20 | 6 | Testing |  | 1d? | 2017-04-24 | 2017-04-24 |  |  | 2017-04-24 | 2017-04-24 | 1d? | 21.25d |  |  |  |  |  |  |
| 21 | 7 | Implementation |  | 1d? | 2017-04-24 | 2017-04-24 |  |  | 2017-04-24 | 2017-04-24 | 1d? | 21.25d |  |  |  |  |  |  |
| 22 | 8 | Commissioning |  | 1d? | 2017-04-24 | 2017-04-24 |  |  | 2017-04-24 | 2017-04-24 | 1d? | 21.25d |  |  |  |  |  |  |
| 23 | 9 | Support |  | 1d? | 2017-04-24 | 2017-04-24 |  |  | 2017-04-24 | 2017-04-24 | 1d? | 21.25d |  |  |  |  |  |  |
